# Projeto IAPSI

Schedule from MS Project, 2024-11-25 to 2025-01-11.

## Calendars

- Standard: Mon-Fri 08:00-12:00, 13:00-17:00; Sat-Sun off.

## Schedule

| ID | WBS | Task | Type | Duration | Start | Finish | Total slack | Constraint |
| --- | --- | --- | --- | --- | --- | --- | --- | --- |
| 1 | 1 | **Projeto** |  | 36d? | 2024-11-25 | 2025-01-11 |  |  |
| 2 | 1.1 | **Reunião Semanal** |  | 30.25d | 2024-11-28 | 2025-01-09 | 1.75d |  |
| 3 | 1.1.1 | Reunião Semanal 1 |  | 2h | 2024-11-28 | 2024-11-28 | 31.75d | start no earlier than 2024-11-28 |
| 4 | 1.1.2 | Reunião Semanal 2 |  | 2h | 2024-12-05 | 2024-12-05 | 26.75d | start no earlier than 2024-12-05 |
| 5 | 1.1.3 | Reunião Semanal 3 |  | 2h | 2024-12-12 | 2024-12-12 | 21.75d | start no earlier than 2024-12-12 |
| 6 | 1.1.4 | Reunião Semanal 4 |  | 2h | 2024-12-19 | 2024-12-19 | 16.75d | start no earlier than 2024-12-19 |
| 7 | 1.1.5 | Reunião Semanal 5 |  | 2h | 2024-12-26 | 2024-12-26 | 11.75d | start no earlier than 2024-12-26 |
| 8 | 1.1.6 | Reunião Semanal 6 |  | 2h | 2025-01-02 | 2025-01-02 | 6.75d | start no earlier than 2025-01-02 |
| 9 | 1.1.7 | Reunião Semanal 7 |  | 2h | 2025-01-09 | 2025-01-09 | 1.75d | start no earlier than 2025-01-09 |
| 10 | 1.2 | **Análise e Desenho** |  | 1d? | 2024-11-25 | 2024-11-25 | 34d |  |
| 11 | 1.2.1 | **Etapa 1** |  | 1d? | 2024-11-25 | 2024-11-25 | 34d |  |
| 12 | 1.2.1.1 | Introdução |  | 1d? | 2024-11-25 | 2024-11-25 | 34d |  |
| 13 | 1.2.1.2 | Definição Lógica de Negócio |  | 1d? | 2024-11-25 | 2024-11-25 | 34d |  |
| 14 | 1.2.1.3 | <New Task> |  | 1d? | 2024-11-25 | 2024-11-25 | 34d |  |
| 15 | 1.2.1.4 | <New Task> |  | 1d? | 2024-11-25 | 2024-11-25 | 34d |  |
| 16 | 1.2.1.5 | Wireframes |  | 1d? | 2024-11-25 | 2024-11-25 | 34d |  |
| 17 | 1.2.1.6 | Entrega Relatório Etapa 1 | milestone | 0d | 2024-11-25 | 2024-11-25 | 35d |  |
| 18 | 1.2.2 | **Etapa 2** |  | 1d? | 2024-11-25 | 2024-11-25 | 34d |  |
| 19 | 1.2.2.1 | Diagramas Casos de Uso |  | 1d? | 2024-11-25 | 2024-11-25 | 34d |  |
| 20 | 1.2.2.2 | Descrição "" |  | 1d? | 2024-11-25 | 2024-11-25 | 34d |  |
| 21 | 1.2.2.3 | <New Task> |  | 1d? | 2024-11-25 | 2024-11-25 | 34d |  |
| 22 | 1.2.2.4 | Conclusão |  | 1d? | 2024-11-25 | 2024-11-25 | 34d |  |
| 23 | 1.2.2.5 | Entrega Relatório Etapa 2 | milestone | 0d | 2024-11-25 | 2024-11-25 | 35d |  |
| 24 | 1.3 | **Desenvolvimento** |  | 1d? | 2024-11-25 | 2024-11-25 | 34d |  |
| 25 | 1.3.1 | **Geral** |  | 1d? | 2024-11-25 | 2024-11-25 | 34d |  |
| 26 | 1.3.1.1 | Estrutura Geral do Site |  | 1d? | 2024-11-25 | 2024-11-25 | 34d |  |
| 27 | 1.3.1.2 | Criação Folha de Estilo |  | 1d? | 2024-11-25 | 2024-11-25 | 34d |  |
| 28 | 1.3.1.3 | <New Task> |  | 1d? | 2024-11-25 | 2024-11-25 | 34d |  |
| 29 | 1.3.1.4 | "?????/ Repositório |  | 1d? | 2024-11-25 | 2024-11-25 | 34d |  |

| ID | WBS | Task | Type | Duration | Start | Finish | Total slack |
| --- | --- | --- | --- | --- | --- | --- | --- |
| 30 | 1.3.2 | **Página Favoritos** |  | 1d? | 2024-11-25 | 2024-11-25 | 34d |
| 31 | 1.3.2.1 | **Criar Lista de Favoritos** |  | 1d? | 2024-11-25 | 2024-11-25 | 34d |
| 32 | 1.3.2.1.1 | Estrutura |  | 1d? | 2024-11-25 | 2024-11-25 | 34d |
| 33 | 1.3.2.1.2 | Pedidos e mostrar |  | 1d? | 2024-11-25 | 2024-11-25 | 34d |
| 34 | 1.3.2.2 | Adicionar Favorito |  | 1d? | 2024-11-25 | 2024-11-25 | 34d |
| 35 | 1.3.2.3 | Remover Favorito |  | 1d? | 2024-11-25 | 2024-11-25 | 34d |
| 36 | 1.3.2.4 | <New Task> |  | 1d? | 2024-11-25 | 2024-11-25 | 34d |
| 37 | 1.3.2.5 | <New Task> |  | 1d? | 2024-11-25 | 2024-11-25 | 34d |
| 38 | 1.3.2.6 | Página Favoritos Terminada | milestone | 0d | 2024-11-25 | 2024-11-25 | 35d |
| 39 | 1.3.3 | **Página Loja** |  | 1d? | 2024-11-25 | 2024-11-25 | 34d |
| 40 | 1.3.3.1 | Mostrar Produtos |  | 1d? | 2024-11-25 | 2024-11-25 | 34d |
| 41 | 1.3.3.2 | Filtrar por País |  | 1d? | 2024-11-25 | 2024-11-25 | 34d |
| 42 | 1.3.3.3 | <New Task> |  | 1d? | 2024-11-25 | 2024-11-25 | 34d |
| 43 | 1.3.4 | **Página Carrinho** |  | 1d? | 2024-11-25 | 2024-11-25 | 34d |
| 44 | 1.3.4.1 | <New Task> |  | 1d? | 2024-11-25 | 2024-11-25 | 34d |
| 45 | 1.3.4.2 | <New Task> |  | 1d? | 2024-11-25 | 2024-11-25 | 34d |
| 46 | 1.3.4.3 | <New Task> |  | 1d? | 2024-11-25 | 2024-11-25 | 34d |
| 47 | 1.3.5 | **Testes** |  | 1d? | 2024-11-25 | 2024-11-25 | 34d |
| 48 | 1.3.5.1 | Testes Gerais |  | 1d? | 2024-11-25 | 2024-11-25 | 34d |
| 49 | 1.3.5.2 | <New Task> |  | 1d? | 2024-11-25 | 2024-11-25 | 34d |
| 50 | 1.3.5.3 | Entrega Software Funcional | milestone | 0d | 2024-11-25 | 2024-11-25 | 35d |
